# Project Schedule

Schedule from MS Project, 2018-01-15 to 2018-08-17.
Conestoga College

## Calendars

- Standard: Mon-Fri 08:00-12:00, 13:00-17:00; Sat-Sun off.

## Resources

| Resource |
| --- |
| All |
| Thomas |
| David |
| Stan |

## Schedule

| ID | WBS | Task | Type | Duration | Start | Finish | Predecessors | Total slack | Free slack | Constraint | Resources | Work |
| --- | --- | --- | --- | --- | --- | --- | --- | --- | --- | --- | --- | --- |
| 1 | 1 | **Air Hockey Robot** |  | 155d | 2018-01-15 | 2018-08-17 |  |  |  |  |  | 5160h |
| 2 | 1.1 | **System Engineering** |  | 110d | 2018-03-02 | 2018-08-03 |  | 11d |  |  | All | 880h |
| 3 | 1.1.1 | Requirements Freeze | milestone | 0d | 2018-03-02 | 2018-03-02 |  | 196d |  | start no earlier than 2018-03-02 |  |  |
| 4 | 1.1.2 | Manual Control | milestone | 0d | 2018-03-16 | 2018-03-16 |  | 186d |  | start no earlier than 2018-03-16 |  |  |
| 5 | 1.1.3 | Defense | milestone | 0d | 2018-04-20 | 2018-04-20 |  | 86d |  | start no earlier than 2018-04-20 |  |  |
| 6 | 1.1.4 | Offense | milestone | 0d | 2018-06-22 | 2018-06-22 |  | 41d |  | start no earlier than 2018-06-22 |  |  |
| 7 | 1.1.5 | Fully Integrated | milestone | 0d | 2018-07-20 | 2018-07-20 |  | 21d |  | start no earlier than 2018-07-20 |  |  |
| 8 | 1.1.6 | Validation Complete | milestone | 0d | 2018-08-03 | 2018-08-03 |  | 86d |  | start no earlier than 2018-08-03 |  |  |
| 9 | 1.1.7 | System Interface Design |  | 2w | 2018-03-05 | 2018-03-16 |  | 110d |  | start no earlier than 2018-03-05 |  |  |
| 10 | 1.2 | **Paddle Controller** |  | 120d | 2018-01-15 | 2018-06-29 |  | 35d |  |  | Thomas | 960h |
| 11 | 1.2.1 | Low-Speed Prototype Design & Integration |  | 50d | 2018-01-15 | 2018-03-23 |  | 180d |  | finish no earlier than 2018-03-23 |  |  |
| 12 | 1.2.2 | System Design |  | 55d | 2018-01-15 | 2018-03-30 |  | 175d |  | finish no earlier than 2018-03-30 |  |  |
| 13 | 1.2.3 | High-Speed Electro-Mechanical System Integration |  | 30d | 2018-04-30 | 2018-06-08 |  | 50d |  | start no earlier than 2018-04-29 |  |  |
| 14 | 1.2.4 | Embedded Controller Design |  | 20d | 2018-04-30 | 2018-05-25 |  | 35d | 0d | start no earlier than 2018-04-29 |  |  |
| 15 | 1.2.5 | Embedded Controller Integration |  | 3w | 2018-05-28 | 2018-06-15 | 14 | 35d | 0d |  |  |  |
| 16 | 1.2.6 | Position Control |  | 2w | 2018-03-05 | 2018-03-16 |  | 80d | 0d | start no earlier than 2018-03-05 |  |  |
| 17 | 1.2.7 | Calibration and Diagnostic Development |  | 1w | 2018-06-04 | 2018-06-08 |  | 50d |  | start no earlier than 2018-06-03 |  |  |
| 18 | 1.2.8 | Safety Control |  | 1w | 2018-06-25 | 2018-06-29 | 19 | 35d |  |  |  |  |
| 19 | 1.2.9 | End of Travel Protection |  | 1w | 2018-06-18 | 2018-06-22 | 15 | 35d | 0d |  |  |  |
| 20 | 1.3 | **Puck Tracker** |  | 75d | 2018-03-05 | 2018-06-15 |  | 5d |  |  | David | 600h |
| 21 | 1.3.1 | System Design |  | 3w | 2018-03-05 | 2018-03-23 |  | 105d |  | start no earlier than 2018-03-05 |  |  |
| 22 | 1.3.2 | Object Detection |  | 2w | 2018-03-05 | 2018-03-16 |  | 5d | 0d | start no earlier than 2018-03-05 |  |  |
| 23 | 1.3.3 | Object Localization |  | 3w | 2018-03-19 | 2018-04-06 | 22 | 5d | 0d |  |  |  |
| 24 | 1.3.4 | Velocity Calculation |  | 1w | 2018-04-09 | 2018-04-13 | 23 | 5d | 0d |  |  |  |
| 25 | 1.3.5 | Calibration & Diagnostic Routines |  | 2w | 2018-06-04 | 2018-06-15 |  | 45d |  | start no earlier than 2018-06-03 |  |  |

| ID | WBS | Task | Duration | Start | Finish | Predecessors | Total slack | Free slack | Constraint | Resources | Work |
| --- | --- | --- | --- | --- | --- | --- | --- | --- | --- | --- | --- |
| 26 | 1.4 | **Master Controller** | 115d | 2018-03-05 | 2018-08-10 |  | 5d |  |  | Stan | 1880h |
| 27 | 1.4.1 | System Design | 2w | 2018-03-05 | 2018-03-16 |  | 110d |  | start no earlier than 2018-03-05 |  |  |
| 28 | 1.4.2 | Trajectory Prediction | 1w | 2018-04-16 | 2018-04-20 | 24 | 5d | 0d |  |  |  |
| 29 | 1.4.3 | Supervisory Control | 3w | 2018-05-14 | 2018-06-01 |  | 55d |  | start no earlier than 2018-05-13 |  |  |
| 30 | 1.4.4 | Data Logging | 2w | 2018-03-12 | 2018-03-23 |  | 105d |  | start no earlier than 2018-03-12 |  |  |
| 31 | 1.4.5 | Control Strategy | 4mo | 2018-04-23 | 2018-08-10 | 28 | 5d |  |  | Stan; Thomas [50%] | 960h |
| 32 | 1.5 | **User Interface** | 105d | 2018-03-12 | 2018-08-03 |  | 10d |  |  | David | 840h |
| 33 | 1.5.1 | System Design | 2w | 2018-04-16 | 2018-04-27 |  | 80d |  | start no earlier than 2018-04-16 |  |  |
| 34 | 1.5.2 | Visualization | 2w | 2018-05-07 | 2018-05-18 |  | 65d |  | start no earlier than 2018-05-07 |  |  |
| 35 | 1.5.3 | Manual Control | 1w | 2018-03-12 | 2018-03-16 |  | 110d |  | start no earlier than 2018-03-12 |  |  |
| 36 | 1.5.4 | Game Interface | 3mo | 2018-05-07 | 2018-07-27 |  | 15d |  | start no earlier than 2018-05-07 |  |  |
| 37 | 1.5.5 | Diagnostics Interface | 5mo | 2018-03-19 | 2018-08-03 |  | 10d |  | start no earlier than 2018-03-19 |  |  |
